# YMCA Lake Lytal

Schedule from MS Project XML, 2025-04-21 to 2026-02-23, status date 2025-04-21.

## Calendars

- Standard 5 Day Workweek: Mon-Fri 08:00-12:00, 13:00-17:00; Sat-Sun off.

## Resources

| Resource | Group |
| --- | --- |
| Hedrick Brothers Construction | E&C Resources |
| E&amp;C Resources |  |
| HVAC Contractor | Subcontractor |
| Concrete - Shell Contractor | Subcontractor |
| Utilities - Sitework Contractor | Subcontractor |
| Storefront &amp; Glazing Contractor | Subcontractor |
| Cabinets &amp; Solid Surfaces Contractor | Subcontractor |
| Electrical Contractor | Subcontractor |
| Subcontractor | E&C Resources |
| Owner / Owner's Representative | E&C Resources |
| Architect / Engineer(s) / Designer | E&C Resources |

## Schedule

| ID | WBS | Task | Type | Duration | Start | Finish | Predecessors | Baseline start | Baseline finish | Baseline duration | Total slack | Free slack | Resources | Work | Text1 |
| --- | --- | --- | --- | --- | --- | --- | --- | --- | --- | --- | --- | --- | --- | --- | --- |
| 1 | YMCA Lake Lytal | HVAC Contract |  | 5d | 2025-06-12 | 2025-06-18 | 146SS+16h | 2025-06-12 | 2025-06-18 | 5d | 0.02d | 0d | Hedrick Brothers Construction | 40h | A1080 |
| 2 | YMCA Lake Lytal | HVAC Equipment |  | 140d | 2025-06-19 | 2025-12-31 | 1 | 2025-06-19 | 2025-12-31 | 140d | 0.06d |  | HVAC Contractor [7.14%] | 80h | A1090 |
| 3 | YMCA Lake Lytal | Shell Concrete Contract |  | 5d | 2025-06-16 | 2025-06-20 | 1SS+16h | 2025-06-16 | 2025-06-20 | 5d | 0.02d | 0d | Hedrick Brothers Construction | 40h | A1140 |
| 4 | YMCA Lake Lytal | Concrete Reinforcing, Embed, and Anchoring |  | 45d | 2025-06-23 | 2025-08-22 | 3 | 2025-06-23 | 2025-08-22 | 45d | 0.22d |  | Concrete - Shell Contractor [33.33%] | 120h | A1150 |
| 5 | YMCA Lake Lytal | Structural Steel Contract |  | 5d | 2025-06-18 | 2025-06-24 | 3SS+16h | 2025-06-18 | 2025-06-24 | 5d | 0.02d | 0d | Hedrick Brothers Construction | 40h | A1180 |
| 6 | YMCA Lake Lytal | Structural Steel |  | 50d | 2025-06-25 | 2025-09-02 | 5 | 2025-06-25 | 2025-09-02 | 50d | 0.21d |  |  |  | A1190 |
| 7 | YMCA Lake Lytal | Sitework Contract |  | 5d | 2025-06-30 | 2025-07-04 | 23SS+16h | 2025-06-30 | 2025-07-04 | 5d | 0.02d | 0d | Hedrick Brothers Construction | 40h | A1200 |
| 8 | YMCA Lake Lytal | Site Utilities |  | 35d | 2025-07-07 | 2025-08-22 | 7 | 2025-07-07 | 2025-08-22 | 35d | 0.22d |  | Utilities - Sitework Contractor | 280h | A1210 |
| 9 | YMCA Lake Lytal | Storefront Contract |  | 5d | 2025-07-02 | 2025-07-08 | 7SS+16h | 2025-07-02 | 2025-07-08 | 5d | 0.02d | 0d |  |  | A1220 |
| 10 | YMCA Lake Lytal | Storefront, Glass, and Glazing |  | 150d | 2025-07-09 | 2026-02-03 | 9 | 2025-07-09 | 2026-02-03 | 150d | 0.02d |  | Storefront &amp; Glazing Contractor | 1200h | A1230 |
| 11 | YMCA Lake Lytal | Cabinets &amp; Countertops Contract |  | 5d | 2025-07-08 | 2025-07-14 | 20SS+16h | 2025-07-08 | 2025-07-14 | 5d | 0.08d | 0d |  |  | A1240 |
| 12 | YMCA Lake Lytal | Cabinets &amp; Countertops |  | 110d | 2025-07-15 | 2025-12-15 | 11 | 2025-07-15 | 2025-12-15 | 110d | 0.08d |  | Cabinets &amp; Solid Surfaces Contractor | 880h | A1060 |
| 13 | YMCA Lake Lytal | Plumbing Contract |  | 5d | 2025-06-20 | 2025-06-26 | 5SS+16h | 2025-06-20 | 2025-06-26 | 5d | 0.02d | 0d |  |  | A1250 |
| 14 | YMCA Lake Lytal | Fire Protection Contract |  | 5d | 2025-06-24 | 2025-06-30 | 13SS+16h | 2025-06-24 | 2025-06-30 | 5d | 0.02d | 0d |  |  | A1260 |
| 15 | YMCA Lake Lytal | Plumbing - Rough Materials |  | 30d | 2025-06-27 | 2025-08-07 | 13 | 2025-06-27 | 2025-08-07 | 30d | 0.24d |  |  |  | A1070 |
| 16 | YMCA Lake Lytal | Plumbing - Fixtures |  | 70d | 2025-06-27 | 2025-10-02 | 13 | 2025-06-27 | 2025-10-02 | 70d | 0.17d |  |  |  | A1100 |
| 17 | YMCA Lake Lytal | Fire Protection Materials |  | 30d | 2025-07-01 | 2025-08-11 | 14 | 2025-07-01 | 2025-08-11 | 30d | 0.23d |  |  |  | A1110 |
| 18 | YMCA Lake Lytal | Fire Protection Design |  | 30d | 2025-07-01 | 2025-08-11 | 14 | 2025-07-01 | 2025-08-11 | 30d | 0.23d |  |  |  | A1120 |
| 19 | YMCA Lake Lytal | Low Voltage Contract - AV &amp; Access Control |  | 5d | 2025-07-10 | 2025-07-16 | 11SS+16h | 2025-07-10 | 2025-07-16 | 5d | 0.2d | 0d |  |  | A1130 |
| 20 | YMCA Lake Lytal | Fire Alarm Contract |  | 5d | 2025-07-04 | 2025-07-10 | 9SS+16h | 2025-07-04 | 2025-07-10 | 5d | 0.08d | 0d |  |  | A1160 |
| 21 | YMCA Lake Lytal | Fire Alarm Design |  | 30d | 2025-07-11 | 2025-08-21 | 20 | 2025-07-11 | 2025-08-21 | 30d | 0.22d |  |  |  | A1170 |
| 22 | YMCA Lake Lytal | Low Volatage - AV &amp; Access Control |  | 40d | 2025-07-17 | 2025-09-10 | 19 | 2025-07-17 | 2025-09-10 | 40d | 0.2d |  |  |  | A1270 |
| 23 | YMCA Lake Lytal | Elevator Contract |  | 10d | 2025-06-26 | 2025-07-09 | 14SS+16h | 2025-06-26 | 2025-07-09 | 10d | 0.02d | 0d |  |  | A1280 |
| 24 | YMCA Lake Lytal | Miscellaneous Metals Contract |  | 5d | 2025-07-22 | 2025-07-28 | 30SS+16h | 2025-07-22 | 2025-07-28 | 5d | 0.12d | 0d |  |  | A1290 |
| 25 | YMCA Lake Lytal | Elevator Equipment, Cab, and Finishes |  | 140d | 2025-07-10 | 2026-01-21 | 23 | 2025-07-10 | 2026-01-21 | 140d | 0.04d |  |  |  | A1300 |
| 26 | YMCA Lake Lytal | Framing and Drywall Contract |  | 5d | 2025-07-10 | 2025-07-16 | 11SS+16h | 2025-07-10 | 2025-07-16 | 5d | 0.12d | 0d |  |  | A1310 |
| 27 | YMCA Lake Lytal | Framing &amp; Drywall Materials |  | 30d | 2025-07-17 | 2025-08-27 | 26 | 2025-07-17 | 2025-08-27 | 30d | 0.21d |  |  |  | A1320 |
| 28 | YMCA Lake Lytal | Doors, Frames, and Hardware Contract |  | 5d | 2025-07-14 | 2025-07-18 | 26SS+16h | 2025-07-14 | 2025-07-18 | 5d | 0.12d | 0d |  |  | A1330 |
| 29 | YMCA Lake Lytal | Doors, Frames, and Hardware |  | 60d | 2025-07-21 | 2025-10-10 | 28 | 2025-07-21 | 2025-10-10 | 60d | 0.16d |  |  |  | A1340 |
| 30 | YMCA Lake Lytal | Operable Partitions Contract |  | 5d | 2025-07-18 | 2025-07-24 | 31SS+16h | 2025-07-18 | 2025-07-24 | 5d | 0.12d | 0d |  |  | A1350 |
| 31 | YMCA Lake Lytal | Composite Panels Contract |  | 5d | 2025-07-16 | 2025-07-22 | 28SS+16h | 2025-07-16 | 2025-07-22 | 5d | 0.12d | 0d |  |  | A1360 |
| 32 | YMCA Lake Lytal | Composite Panels |  | 70d | 2025-07-23 | 2025-10-28 | 31 | 2025-07-23 | 2025-10-28 | 70d | 0.14d |  |  |  | A1370 |
| 33 | YMCA Lake Lytal | Operable Partitions |  | 50d | 2025-07-25 | 2025-10-02 | 30 | 2025-07-25 | 2025-10-02 | 50d | 0.17d |  |  |  | A1380 |
| 34 | YMCA Lake Lytal | Miscellaneous Metals |  | 80d | 2025-07-29 | 2025-11-17 | 24 | 2025-07-29 | 2025-11-17 | 80d | 0.12d |  |  |  | A1390 |
| 35 | YMCA Lake Lytal | Appliances Contract |  | 5d | 2025-07-24 | 2025-07-30 | 24SS+16h | 2025-07-24 | 2025-07-30 | 5d | 0.18d | 0d |  |  | A1400 |
| 36 | YMCA Lake Lytal | Appliances |  | 40d | 2025-07-31 | 2025-09-24 | 35 | 2025-07-31 | 2025-09-24 | 40d | 0.18d |  |  |  | A1410 |
| 37 | YMCA Lake Lytal | Subcontractor Selection and Buyout Complete | milestone | 0d | 2025-07-30 | 2025-07-30 | 35FF | 2025-07-30 | 2025-07-30 | 0d | 0.25d |  |  |  | A1420 |
| 38 | YMCA Lake Lytal | Site Development Permit |  | 5d | 2025-04-21 | 2025-04-25 |  | 2025-04-21 | 2025-04-25 | 5d | 0.36d |  |  |  | A1430 |
| 39 | YMCA Lake Lytal | SFMWD Water Use Permit |  | 5d | 2025-04-21 | 2025-04-25 |  | 2025-04-21 | 2025-04-25 | 5d | 0.36d |  |  |  | A1440 |
| 40 | YMCA Lake Lytal | Building Permit |  | 5d | 2025-04-21 | 2025-04-25 |  | 2025-04-21 | 2025-04-25 | 5d | 0.36d |  |  |  | A1450 |
| 41 | YMCA Lake Lytal | Electrical Permit |  | 5d | 2025-04-21 | 2025-04-25 |  | 2025-04-21 | 2025-04-25 | 5d | 0.36d |  |  |  | A1460 |
| 42 | YMCA Lake Lytal | Fire Sprinkler Permit |  | 5d | 2025-04-21 | 2025-04-25 |  | 2025-04-21 | 2025-04-25 | 5d | 0.36d |  |  |  | A1470 |
| 43 | YMCA Lake Lytal | Fire Alarm Permit |  | 5d | 2025-04-21 | 2025-04-25 |  | 2025-04-21 | 2025-04-25 | 5d | 0.36d |  |  |  | A1480 |
| 44 | YMCA Lake Lytal | Plumbing Permit |  | 5d | 2025-04-21 | 2025-04-25 |  | 2025-04-21 | 2025-04-25 | 5d | 0.36d |  |  |  | A1490 |
| 45 | YMCA Lake Lytal | HVAC Permit |  | 5d | 2025-04-21 | 2025-04-25 |  | 2025-04-21 | 2025-04-25 | 5d | 0.36d |  |  |  | A1500 |
| 46 | YMCA Lake Lytal | Roofing Permit |  | 5d | 2025-04-21 | 2025-04-25 |  | 2025-04-21 | 2025-04-25 | 5d | 0.36d |  |  |  | A1510 |
| 47 | YMCA Lake Lytal | Fence Permit |  | 5d | 2025-04-21 | 2025-04-25 |  | 2025-04-21 | 2025-04-25 | 5d | 0.36d |  |  |  | A1520 |
| 48 | YMCA Lake Lytal | Low Voltage Permit |  | 5d | 2025-04-21 | 2025-04-25 |  | 2025-04-21 | 2025-04-25 | 5d | 0.36d |  |  |  | A1530 |
| 49 | YMCA Lake Lytal | Elevator Permit |  | 5d | 2025-04-21 | 2025-04-25 |  | 2025-04-21 | 2025-04-25 | 5d | 0.36d |  |  |  | A1540 |
| 50 | YMCA Lake Lytal | Construction Trailer Permit |  | 5d | 2025-04-21 | 2025-04-25 |  | 2025-04-21 | 2025-04-25 | 5d | 0.36d |  |  |  | A1550 |
| 51 | YMCA Lake Lytal | Temporary Electric Permit |  | 5d | 2025-04-21 | 2025-04-25 |  | 2025-04-21 | 2025-04-25 | 5d | 0.36d |  |  |  | A1560 |
| 52 | YMCA Lake Lytal | Landscape &amp; Irrigation Permit(s) |  | 5d | 2025-04-21 | 2025-04-25 |  | 2025-04-21 | 2025-04-25 | 5d | 0.36d |  |  |  | A1570 |
| 53 | YMCA Lake Lytal | Slab on Grade Complete | milestone | 0d | 2025-04-21 | 2025-04-21 |  | 2025-04-21 | 2025-04-21 | 0d | 0.37d |  |  |  | A1710 |
| 54 | YMCA Lake Lytal | 2nd Floor Deck Complete | milestone | 0d | 2025-04-21 | 2025-04-21 |  | 2025-04-21 | 2025-04-21 | 0d | 0.37d |  |  |  | A1720 |
| 55 | YMCA Lake Lytal | Shell Top-Out | milestone | 0d | 2025-04-21 | 2025-04-21 |  | 2025-04-21 | 2025-04-21 | 0d | 0.37d |  |  |  | A1730 |
| 56 | YMCA Lake Lytal | Building Dry-In | milestone | 0d | 2025-04-21 | 2025-04-21 |  | 2025-04-21 | 2025-04-21 | 0d | 0.37d |  |  |  | A1740 |
| 57 | YMCA Lake Lytal | Interior Rough MEPF Complete | milestone | 0d | 2025-04-21 | 2025-04-21 |  | 2025-04-21 | 2025-04-21 | 0d | 0.37d |  |  |  | A1750 |
| 58 | YMCA Lake Lytal | Drywall Hang and Finish Complete | milestone | 0d | 2025-04-21 | 2025-04-21 |  | 2025-04-21 | 2025-04-21 | 0d | 0.37d |  |  |  | A1760 |
| 59 | YMCA Lake Lytal | Permanent Power Estabished | milestone | 0d | 2025-04-21 | 2025-04-21 |  | 2025-04-21 | 2025-04-21 | 0d | 0.37d |  |  |  | A1770 |
| 60 | YMCA Lake Lytal | AC Startup | milestone | 0d | 2025-04-21 | 2025-04-21 |  | 2025-04-21 | 2025-04-21 | 0d | 0.37d |  |  |  | A1780 |
| 61 | YMCA Lake Lytal | Exterior Finishes Complete | milestone | 0d | 2025-04-21 | 2025-04-21 |  | 2025-04-21 | 2025-04-21 | 0d | 0.37d |  |  |  | A1790 |
| 62 | YMCA Lake Lytal | Interior Finishes Complete | milestone | 0d | 2025-04-21 | 2025-04-21 |  | 2025-04-21 | 2025-04-21 | 0d | 0.37d |  |  |  | A1800 |
| 63 | YMCA Lake Lytal | Skate Park Construction Start | milestone | 0d | 2025-04-21 | 2025-04-21 |  | 2025-04-21 | 2025-04-21 | 0d | 0.37d |  |  |  | A1810 |
| 64 | YMCA Lake Lytal | Skate Park Construction Complete | milestone | 0d | 2025-04-21 | 2025-04-21 |  | 2025-04-21 | 2025-04-21 | 0d | 0.37d |  |  |  | A1820 |
| 65 | YMCA Lake Lytal | Notice to Procced Issued | milestone | 0d | 2025-04-21 | 2025-04-21 |  | 2025-04-21 | 2025-04-21 | 0d | 0.35d | 0d |  |  | A1830 |
| 66 | YMCA Lake Lytal | Layout - Building Corners and Contractor's Trailer / Staging |  | 3d | 2025-04-21 | 2025-04-23 | 65SS | 2025-04-21 | 2025-04-23 | 3d | 0.35d | 0d |  |  | A1840 |
| 67 | YMCA Lake Lytal | Temporary Construction Fence &amp; Windscreen |  | 2d | 2025-04-24 | 2025-04-25 | 66 | 2025-04-24 | 2025-04-25 | 2d | 0.35d | 0d |  |  | A1850 |
| 68 | YMCA Lake Lytal | Contractor's Trailer Delivery and Assembly |  | 4d | 2025-04-21 | 2025-04-24 |  | 2025-04-21 | 2025-04-24 | 4d | 0.36d |  |  |  | A1860 |
| 69 | YMCA Lake Lytal | Temporary Power to Trailer and Rack |  | 5d | 2025-04-24 | 2025-04-30 | 66 | 2025-04-24 | 2025-04-30 | 5d | 0.35d |  |  |  | A1870 |
| 70 | YMCA Lake Lytal | Temporary Water to Trailer and Bibs |  | 5d | 2025-04-24 | 2025-04-30 | 66 | 2025-04-24 | 2025-04-30 | 5d | 0.35d |  |  |  | A1880 |

| ID | WBS | Task | Type | Duration | Start | Finish | Predecessors | Baseline start | Baseline finish | Baseline duration | Total slack | Free slack | Text1 |
| --- | --- | --- | --- | --- | --- | --- | --- | --- | --- | --- | --- | --- | --- |
| 71 | YMCA Lake Lytal | Silt Fence &amp; Erosion Control Installation |  | 5d | 2025-04-28 | 2025-05-02 | 67 | 2025-04-28 | 2025-05-02 | 5d | 0.35d |  | A1890 |
| 72 | YMCA Lake Lytal | Building Pad Construction |  | 10d | 2025-04-21 | 2025-05-02 |  | 2025-04-21 | 2025-05-02 | 10d | 0.35d |  | A1900 |
| 73 | YMCA Lake Lytal | Excavate Elevator Pit |  | 3d | 2025-04-21 | 2025-04-23 |  | 2025-04-21 | 2025-04-23 | 3d | 0.18d | 0d | A1910 |
| 74 | YMCA Lake Lytal | Dewatering - Install &amp; Dry Pit |  | 4d | 2025-04-21 | 2025-04-24 |  | 2025-04-21 | 2025-04-24 | 4d | 0.31d | 0d | A1920 |
| 75 | YMCA Lake Lytal | Waterproofing Membrane - Bottom of Mat |  | 1d | 2025-04-25 | 2025-04-25 | 74 | 2025-04-25 | 2025-04-25 | 1d | 0.31d | 0d | A1930 |
| 76 | YMCA Lake Lytal | Formwork &amp; Reinforcing - Mat Foundation |  | 4d | 2025-04-28 | 2025-05-01 | 75 | 2025-04-28 | 2025-05-01 | 4d | 0.31d | 0d | A1940 |
| 77 | YMCA Lake Lytal | Inspection - Reinforcing - Mat Foundation |  | 1d | 2025-05-01 | 2025-05-01 | 76FF | 2025-05-01 | 2025-05-01 | 1d | 0.31d | 0d | A1950 |
| 78 | YMCA Lake Lytal | Pour &amp; Cure - Mat Foundation |  | 3d | 2025-05-02 | 2025-05-06 | 77 | 2025-05-02 | 2025-05-06 | 3d | 0.31d | 0d | A1960 |
| 79 | YMCA Lake Lytal | Strip Forms - Mat Foundation |  | 1d | 2025-05-07 | 2025-05-07 | 78 | 2025-05-07 | 2025-05-07 | 1d | 0.31d | 0d | A1970 |
| 80 | YMCA Lake Lytal | Formwork &amp; Reinforcing - Pit &amp; Shear Walls |  | 10d | 2025-05-08 | 2025-05-21 | 79 | 2025-05-08 | 2025-05-21 | 10d | 0.31d | 0d | A1980 |
| 81 | YMCA Lake Lytal | Inspection - Reinforcing - Pit &amp; Shear Walls |  | 5d | 2025-05-22 | 2025-05-28 | 80 | 2025-05-22 | 2025-05-28 | 5d | 0.31d | 0d | A1990 |
| 82 | YMCA Lake Lytal | Pour &amp; Cure - Pit &amp; Shear Walls |  | 4d | 2025-05-29 | 2025-06-03 | 81 | 2025-05-29 | 2025-06-03 | 4d | 0.31d | 0d | A2000 |
| 83 | YMCA Lake Lytal | Waterproofing Membrane - Pit Walls |  | 2d | 2025-06-06 | 2025-06-09 | 84 | 2025-06-06 | 2025-06-09 | 2d | 0.31d |  | A2010 |
| 84 | YMCA Lake Lytal | Strip Forms - Pit &amp; Shear Walls |  | 2d | 2025-06-04 | 2025-06-05 | 82 | 2025-06-04 | 2025-06-05 | 2d | 0.31d | 0d | A2020 |
| 85 | YMCA Lake Lytal | Guiderails &amp; Brackets |  | 4d | 2025-04-28 | 2025-05-01 | 98 | 2025-04-28 | 2025-05-01 | 4d | 0.34d | 0d | A2030 |
| 86 | YMCA Lake Lytal | Hoistbeam Installation |  | 2d | 2025-05-02 | 2025-05-05 | 85 | 2025-05-02 | 2025-05-05 | 2d | 0.34d | 0d | A2040 |
| 87 | YMCA Lake Lytal | Hoist Machine Install |  | 5d | 2025-05-06 | 2025-05-12 | 86 | 2025-05-06 | 2025-05-12 | 5d | 0.34d |  | A2050 |
| 88 | YMCA Lake Lytal | Car Frame &amp; Platform Install |  | 5d | 2025-04-21 | 2025-04-25 |  | 2025-04-21 | 2025-04-25 | 5d | 0.33d | 0d | A2060 |
| 89 | YMCA Lake Lytal | Frame &amp; Door Install |  | 5d | 2025-04-28 | 2025-05-02 | 88 | 2025-04-28 | 2025-05-02 | 5d | 0.33d | 0d | A2070 |
| 90 | YMCA Lake Lytal | Cab &amp; Finish Assembly |  | 5d | 2025-05-05 | 2025-05-09 | 89 | 2025-05-05 | 2025-05-09 | 5d | 0.33d | 0d | A2080 |
| 91 | YMCA Lake Lytal | Mechanical &amp; Electricl Connections |  | 5d | 2025-05-08 | 2025-05-14 | 90SS+24h | 2025-05-08 | 2025-05-14 | 5d | 0.34d |  | A2090 |
| 92 | YMCA Lake Lytal | Control System &amp; ICS Panel Install |  | 5d | 2025-05-12 | 2025-05-16 | 90 | 2025-05-12 | 2025-05-16 | 5d | 0.33d | 0d | A2100 |
| 93 | YMCA Lake Lytal | Final Adjustments &amp; Testing |  | 5d | 2025-05-19 | 2025-05-23 | 92 | 2025-05-19 | 2025-05-23 | 5d | 0.33d | 0d | A2110 |
| 94 | YMCA Lake Lytal | State Elevator Inspection | milestone | 0d | 2025-05-23 | 2025-05-23 | 93FF | 2025-05-23 | 2025-05-23 | 0d | 0.33d |  | A2120 |
| 95 | YMCA Lake Lytal | Excavate Foundations |  | 5d | 2025-04-24 | 2025-04-30 | 73 | 2025-04-24 | 2025-04-30 | 5d | 0.18d | 0d | A2130 |
| 96 | YMCA Lake Lytal | Formwork &amp; Reinforcing - Footings |  | 10d | 2025-05-01 | 2025-05-14 | 95 | 2025-05-01 | 2025-05-14 | 10d | 0.18d | 0d | A2140 |
| 97 | YMCA Lake Lytal | CMU Install - Floor 1 |  | 5d | 2025-04-21 | 2025-04-25 |  | 2025-04-21 | 2025-04-25 | 5d | 0.36d |  | A2150 |
| 98 | YMCA Lake Lytal | CMU Install - Floor 2 |  | 5d | 2025-04-21 | 2025-04-25 |  | 2025-04-21 | 2025-04-25 | 5d | 0.34d | 0d | A2160 |
| 99 | YMCA Lake Lytal | Inspection - Reinfocing - Footings |  | 2d | 2025-05-22 | 2025-05-23 | 100 | 2025-05-22 | 2025-05-23 | 2d | 0.18d | 0d | A2170 |
| 100 | YMCA Lake Lytal | Anchor Bolts - Footings |  | 5d | 2025-05-15 | 2025-05-21 | 96 | 2025-05-15 | 2025-05-21 | 5d | 0.18d | 0d | A2180 |
| 101 | YMCA Lake Lytal | Underground Plumbing |  | 8d | 2025-06-06 | 2025-06-17 | 104 | 2025-06-06 | 2025-06-17 | 8d | 0.24d | 0d | A2190 |
| 102 | YMCA Lake Lytal | Pour &amp; Cure - Footings |  | 5d | 2025-05-26 | 2025-05-30 | 99 | 2025-05-26 | 2025-05-30 | 5d | 0.18d | 0d | A2200 |
| 103 | YMCA Lake Lytal | Strip Forms - Footings |  | 2d | 2025-06-02 | 2025-06-03 | 102 | 2025-06-02 | 2025-06-03 | 2d | 0.18d | 0d | A2210 |
| 104 | YMCA Lake Lytal | Backfill Footings &amp; Elevator Pit |  | 2d | 2025-06-04 | 2025-06-05 | 103 | 2025-06-04 | 2025-06-05 | 2d | 0.18d | 0d | A2220 |
| 105 | YMCA Lake Lytal | Underground Electrical |  | 10d | 2025-06-16 | 2025-06-27 | 101SS+48h | 2025-06-16 | 2025-06-27 | 10d | 0.24d | 0d | A2230 |
| 106 | YMCA Lake Lytal | Inspection - Underground Plumbing |  | 2d | 2025-06-18 | 2025-06-19 | 101 | 2025-06-18 | 2025-06-19 | 2d | 0.25d | 0.01d | A2240 |
| 107 | YMCA Lake Lytal | Inspection - Underground Electrical |  | 2d | 2025-06-30 | 2025-07-01 | 105 | 2025-06-30 | 2025-07-01 | 2d | 0.24d | 0d | A2250 |
| 108 | YMCA Lake Lytal | Backfill Underground Electrical &amp; Plumbing |  | 2d | 2025-07-02 | 2025-07-03 | 107, 106 | 2025-07-02 | 2025-07-03 | 2d | 0.24d | 0d | A2260 |
| 109 | YMCA Lake Lytal | Prep Pad for Slab on Grade |  | 3d | 2025-07-04 | 2025-07-08 | 108 | 2025-07-04 | 2025-07-08 | 3d | 0.24d | 0d | A2270 |
| 110 | YMCA Lake Lytal | Excavate Thickened Edge |  | 4d | 2025-07-09 | 2025-07-14 | 109 | 2025-07-09 | 2025-07-14 | 4d | 0.24d | 0d | A2280 |
| 111 | YMCA Lake Lytal | Slab on Grade - Formwork |  | 4d | 2025-07-15 | 2025-07-18 | 110 | 2025-07-15 | 2025-07-18 | 4d | 0.24d | 0d | A2290 |
| 112 | YMCA Lake Lytal | Slab on Grade - Vapor Barrier, WWR, Reinforcing |  | 5d | 2025-07-21 | 2025-07-25 | 111 | 2025-07-21 | 2025-07-25 | 5d | 0.24d | 0d | A2300 |
| 113 | YMCA Lake Lytal | Inspection - Reinforcing - Slab on Grade |  | 2d | 2025-07-28 | 2025-07-29 | 112 | 2025-07-28 | 2025-07-29 | 2d | 0.24d | 0d | A2310 |
| 114 | YMCA Lake Lytal | Pour &amp; Cure - Slab on Grade |  | 4d | 2025-07-30 | 2025-08-04 | 113 | 2025-07-30 | 2025-08-04 | 4d | 0.24d | 0d | A2320 |
| 115 | YMCA Lake Lytal | Slab on Grade - Strip Forms |  | 2d | 2025-08-05 | 2025-08-06 | 114 | 2025-08-05 | 2025-08-06 | 2d | 0.24d |  | A2330 |
| 116 | YMCA Lake Lytal | Shear Walls - Formwork &amp; Reinforcing |  | 10d | 2025-06-06 | 2025-06-19 | 104 | 2025-06-06 | 2025-06-19 | 10d | 0.19d | 0d | A2340 |
| 117 | YMCA Lake Lytal | Inspection - Reinforcing - Shear Walls |  | 2d | 2025-06-20 | 2025-06-23 | 116 | 2025-06-20 | 2025-06-23 | 2d | 0.19d | 0.01d | A2350 |
| 118 | YMCA Lake Lytal | Shear Walls - Pour &amp; Cure |  | 6d | 2025-06-30 | 2025-07-07 | 117, 124 | 2025-06-30 | 2025-07-07 | 6d | 0.18d | 0d | A2360 |
| 119 | YMCA Lake Lytal | Formwork &amp; Reinforcing - CIP Columns to 2nd Floor |  | 5d | 2025-06-06 | 2025-06-12 | 104 | 2025-06-06 | 2025-06-12 | 5d | 0.18d | 0d | A2370 |
| 120 | YMCA Lake Lytal | Formwork &amp; Reinforcing - CIP Columns to Roof |  | 8d | 2025-06-13 | 2025-06-24 | 119 | 2025-06-13 | 2025-06-24 | 8d | 0.18d | 0d | A2390 |
| 121 | YMCA Lake Lytal | CIP Columns - Pour &amp; Cure |  | 6d | 2025-06-30 | 2025-07-07 | 119, 120, 124 | 2025-06-30 | 2025-07-07 | 6d | 0.18d | 0d | A2400 |
| 122 | YMCA Lake Lytal | Steel Columns to 2nd Floor |  | 5d | 2025-06-06 | 2025-06-12 | 104 | 2025-06-06 | 2025-06-12 | 5d | 0.21d | 0d | A2410 |
| 123 | YMCA Lake Lytal | Steel Columns to Roof |  | 5d | 2025-06-13 | 2025-06-19 | 122 | 2025-06-13 | 2025-06-19 | 5d | 0.21d | 0.03d | A2420 |
| 124 | YMCA Lake Lytal | Embeds - CIP Columns &amp; Shear Walls |  | 3d | 2025-06-25 | 2025-06-27 | 120, 119 | 2025-06-25 | 2025-06-27 | 3d | 0.18d | 0d | A2430 |
| 125 | YMCA Lake Lytal | Strip Forms - CIP Columns &amp; Shear Walls |  | 3d | 2025-07-08 | 2025-07-10 | 121, 118 | 2025-07-08 | 2025-07-10 | 3d | 0.18d | 0d | A2440 |
| 126 | YMCA Lake Lytal | CMU - First Lift to TB &amp; Stairwells |  | 12d | 2025-06-04 | 2025-06-19 | 103 | 2025-06-04 | 2025-06-19 | 12d | 0.18d | 0d | A2450 |
| 127 | YMCA Lake Lytal | CMU - Stem Walls |  | 3d | 2025-06-20 | 2025-06-24 | 126 | 2025-06-20 | 2025-06-24 | 3d | 0.29d |  | A2460 |
| 128 | YMCA Lake Lytal | Steel Beams |  | 10d | 2025-07-14 | 2025-07-25 | 133, 125, 123, 122 | 2025-07-14 | 2025-07-25 | 10d | 0.18d | 0d | A2380 |
| 129 | YMCA Lake Lytal | Formwork &amp; Reinforcing - Tie Beams |  | 5d | 2025-06-20 | 2025-06-26 | 126 | 2025-06-20 | 2025-06-26 | 5d | 0.18d | 0d | A2470 |
| 130 | YMCA Lake Lytal | Pour &amp; Cure - Tie Beams |  | 6d | 2025-07-01 | 2025-07-08 | 131 | 2025-07-01 | 2025-07-08 | 6d | 0.18d | 0d | A2480 |
| 131 | YMCA Lake Lytal | Embeds - Tie Beams |  | 2d | 2025-06-27 | 2025-06-30 | 129 | 2025-06-27 | 2025-06-30 | 2d | 0.18d | 0d | A2490 |
| 132 | YMCA Lake Lytal | Pour &amp; Cure - Tie Beams |  | 5d | 2025-06-27 | 2025-07-03 | 129 | 2025-06-27 | 2025-07-03 | 5d | 0.28d |  | A2500 |
| 133 | YMCA Lake Lytal | Strip Forms - Tie Beams |  | 3d | 2025-07-09 | 2025-07-11 | 130 | 2025-07-09 | 2025-07-11 | 3d | 0.18d | 0d | A2510 |
| 134 | YMCA Lake Lytal | Metal Deck |  | 8d | 2025-07-28 | 2025-08-06 | 128 | 2025-07-28 | 2025-08-06 | 8d | 0.18d | 0d | A2520 |
| 135 | YMCA Lake Lytal | Formwork &amp; Reinforcing - CIP Columns to Roof |  | 5d | 2025-08-07 | 2025-08-13 | 134 | 2025-08-07 | 2025-08-13 | 5d | 0.2d | 0.01d | A2530 |
| 136 | YMCA Lake Lytal | Steel Columns to Roof |  | 7d | 2025-08-07 | 2025-08-15 | 134 | 2025-08-07 | 2025-08-15 | 7d | 0.23d |  | A2540 |
| 137 | YMCA Lake Lytal | CMU - 2nd Lift to TB at Roof |  | 8d | 2025-08-07 | 2025-08-18 | 134 | 2025-08-07 | 2025-08-18 | 8d | 0.18d | 0d | A2550 |
| 138 | YMCA Lake Lytal | Formwork &amp; Reinforcing - Tie Beams |  | 5d | 2025-08-19 | 2025-08-25 | 137 | 2025-08-19 | 2025-08-25 | 5d | 0.18d | 0d | A2560 |
| 139 | YMCA Lake Lytal | Embeds - Tie Beams &amp; CIP Columns |  | 5d | 2025-08-26 | 2025-09-01 | 138, 135 | 2025-08-26 | 2025-09-01 | 5d | 0.18d | 0d | A2570 |
| 140 | YMCA Lake Lytal | Pour &amp; Cure - Tie Beams &amp; CIP Columns |  | 6d | 2025-09-02 | 2025-09-09 | 139 | 2025-09-02 | 2025-09-09 | 6d | 0.18d | 0d | A2580 |

| ID | WBS | Task | Type | Duration | Start | Finish | Predecessors | Baseline start | Baseline finish | Baseline duration | Total slack | Free slack | Resources | Work | Text1 |
| --- | --- | --- | --- | --- | --- | --- | --- | --- | --- | --- | --- | --- | --- | --- | --- |
| 141 | YMCA Lake Lytal | Steel Beams &amp; Joists |  | 10d | 2025-09-17 | 2025-09-30 | 142 | 2025-09-17 | 2025-09-30 | 10d | 0.18d |  |  |  | A2590 |
| 142 | YMCA Lake Lytal | Strip Forms - Tie Beams &amp; CIP Columns |  | 5d | 2025-09-10 | 2025-09-16 | 140 | 2025-09-10 | 2025-09-16 | 5d | 0.18d | 0d |  |  | A2600 |
| 143 | YMCA Lake Lytal | Metal Deck |  | 6d | 2025-04-21 | 2025-04-28 | 141 | 2025-04-21 | 2025-04-28 | 6d |  |  |  |  | A2610 |
| 144 | YMCA Lake Lytal | CMU - Parapet |  | 5d | 2025-04-21 | 2025-04-25 | 143 | 2025-04-21 | 2025-04-25 | 5d |  |  |  |  | A2620 |
| 145 | YMCA Lake Lytal | GMP - Fully Executed | milestone | 0d | 2025-06-05 | 2025-06-05 | 170FF | 2025-06-05 | 2025-06-05 | 0d | 0d |  |  |  | A1020 |
| 146 | YMCA Lake Lytal | Electrical Contract |  | 5d | 2025-06-10 | 2025-06-16 | 145FS+16h | 2025-06-10 | 2025-06-16 | 5d | 0d |  | Hedrick Brothers Construction | 40h | A1030 |
| 147 | YMCA Lake Lytal | Switchgear |  | 180d | 2025-06-17 | 2026-02-23 | 146 | 2025-06-17 | 2026-02-23 | 180d | 0d |  | Electrical Contractor [5.56%] | 80h | A1040 |
| 148 | YMCA Lake Lytal | Light Fixture Package |  | 100d | 2025-06-17 | 2025-11-03 | 146 | 2025-06-17 | 2025-11-03 | 100d | 0.13d |  | Electrical Contractor [10%] | 80h | A1050 |
| 149 | MLS | **Milestones** |  |  |  |  |  |  |  |  |  |  |  |  |  |
| 150 | MLS.TURN | **Substantial Completion &amp; Acceptance** |  |  |  |  |  |  |  |  |  |  |  |  |  |
| 151 | MLS.TURN | TCO Application Submittal &amp; Review |  | 10d | 2025-04-21 | 2025-05-02 |  | 2025-04-21 | 2025-05-02 | 10d | 0.35d | 0d |  |  | A1580 |
| 152 | MLS.TURN | TCO Issuance |  | 2d | 2025-05-05 | 2025-05-06 | 151 | 2025-05-05 | 2025-05-06 | 2d | 0.35d |  |  |  | A1590 |
| 153 | MLS.TURN | CO Application Submittal &amp; Review |  | 10d | 2025-04-21 | 2025-05-02 |  | 2025-04-21 | 2025-05-02 | 10d | 0.35d | 0d |  |  | A1600 |
| 154 | MLS.TURN.CO | **Substantial Completion** |  |  |  |  |  |  |  |  |  |  |  |  |  |
| 155 | MLS.TURN.CO | CO Issuance |  | 2d | 2025-05-05 | 2025-05-06 | 153 | 2025-05-05 | 2025-05-06 | 2d | 0.35d | 0d |  |  | A1610 |
| 156 | MLS.TURN.CO | Substantial Completion | milestone | 0d | 2025-05-06 | 2025-05-06 | 155 | 2025-05-06 | 2025-05-06 | 0d | 0.35d |  |  |  | A1620 |
| 157 | MLS.TURN.CO | Final Substantial Completion | milestone | 0d | 2025-04-21 | 2025-04-21 |  | 2025-04-21 | 2025-04-21 | 0d | 0.37d |  |  |  | A1630 |
| 158 | MLS.TURN.OA | **Owner Acceptance** |  |  |  |  |  |  |  |  |  |  |  |  |  |
| 159 | MLS.TURN.OA | Owner Punch-Walk - Building |  | 3d | 2025-04-21 | 2025-04-23 |  | 2025-04-21 | 2025-04-23 | 3d | 0.34d | 0d |  |  | A1640 |
| 160 | MLS.TURN.OA | Owner Punch-Walk - Site |  | 3d | 2025-04-21 | 2025-04-23 |  | 2025-04-21 | 2025-04-23 | 3d | 0.34d | 0d |  |  | A1650 |
| 161 | MLS.TURN.OA | Punch-List Completion - Building |  | 10d | 2025-04-24 | 2025-05-07 | 159 | 2025-04-24 | 2025-05-07 | 10d | 0.34d | 0d |  |  | A1660 |
| 162 | MLS.TURN.OA | Punch-List Completion - Site |  | 10d | 2025-04-24 | 2025-05-07 | 160 | 2025-04-24 | 2025-05-07 | 10d | 0.34d | 0d |  |  | A1670 |
| 163 | MLS.TURN.OA | Owner Acceptance - Building |  | 3d | 2025-05-08 | 2025-05-12 | 161 | 2025-05-08 | 2025-05-12 | 3d | 0.34d | 0d |  |  | A1680 |
| 164 | MLS.TURN.OA | Owner Acceptance - Site |  | 3d | 2025-05-08 | 2025-05-12 | 162 | 2025-05-08 | 2025-05-12 | 3d | 0.34d | 0d |  |  | A1690 |
| 165 | MLS.TURN.OA | Final Owner Acceptance | milestone | 0d | 2025-05-12 | 2025-05-12 | 164, 163 | 2025-05-12 | 2025-05-12 | 0d | 0.34d |  |  |  | A1700 |

| ID | WBS | Task | Duration | Start | Finish | Predecessors | Baseline start | Baseline finish | Baseline duration | Total slack | Constraint | Resources | Work | Text1 |
| --- | --- | --- | --- | --- | --- | --- | --- | --- | --- | --- | --- | --- | --- | --- |
| 166 | PRE | **Preconstruction** |  |  |  |  |  |  |  |  |  |  |  |  |
| 167 | PRE.EST | Estimating &amp; Award |  |  |  |  |  |  |  |  |  |  |  |  |
| 168 | PRE.CA | **Contract Administation** |  |  |  |  |  |  |  |  |  |  |  |  |
| 169 | PRE.CA | Final GMP Pricing | 10d | 2025-04-25 | 2025-05-08 |  | 2025-04-25 | 2025-05-08 | 10d | 0d | start no earlier than 2025-04-25 | Hedrick Brothers Construction [50%]; Hedrick Brothers Construction | 120h | A1000 |
| 170 | PRE.CA | GMP Review | 20d | 2025-05-09 | 2025-06-05 | 169 | 2025-05-09 | 2025-06-05 | 20d | 0d |  | Hedrick Brothers Construction; Owner / Owner's Representative; Architect / Engineer(s) / Designer | 480h | A1010 |
| 171 | PRE.DES | Design Coordination |  |  |  |  |  |  |  |  |  |  |  |  |
