# Buyout schedule JC 7-19-23

Schedule from MS Project, 2026-01-14 to 2026-06-18.

## Calendars

- Standard: Mon-Fri 08:00-12:00, 13:00-17:00; Sat-Sun off.

## Schedule

| ID | WBS | Task | Duration | Start | Finish | Predecessors | Total slack | Free slack | Constraint |
| --- | --- | --- | --- | --- | --- | --- | --- | --- | --- |
| 1 | 1 | **GMP Pricing** | 23d | 2026-01-14 | 2026-02-13 |  | 0d |  |  |
| 2 | 1.1 | Subcontractor Bidding | 2w | 2026-01-14 | 2026-01-27 |  | 0d |  | start no earlier than 2026-01-14 |
| 3 | 1.2 | Addendum/VE | 1w | 2026-01-28 | 2026-02-03 | 2 | 0d |  |  |
| 4 | 1.3 | Prepare & Submit GMP | 1w | 2026-02-04 | 2026-02-10 | 3 | 0d |  |  |
| 5 | 1.4 | Owner Approval of GMP | 1d | 2026-02-11 | 2026-02-11 | 4 | 0d |  |  |
| 6 | 1.5 | Execute Construction Contract | 2d | 2026-02-12 | 2026-02-13 | 5 | 0d |  |  |
| 7 | 2 | **Buyout** | 89d | 2026-02-16 | 2026-06-18 |  | 0d |  |  |
| 8 | 2.1 | **Package #1 - Priority Release** | 37d | 2026-02-16 | 2026-04-07 |  | 3d |  |  |
| 9 | 2.1.1 | Matl test/inspections | 5d | 2026-02-16 | 2026-02-20 | 6 | 84d |  |  |
| 10 | 2.1.2 | Soil Treatment | 1d | 2026-02-16 | 2026-02-16 | 6 | 88d |  |  |
| 11 | 2.1.3 | Survey | 5d | 2026-02-16 | 2026-02-20 | 6 | 84d |  |  |
| 12 | 2.1.4 | Sitework & Site Utilities | 10d | 2026-02-16 | 2026-02-27 | 6 | 79d |  |  |
| 13 | 2.1.5 | Electrical | 10d | 2026-02-19 | 2026-03-04 | 6FS+3d | 0d |  |  |
| 14 | 2.1.6 | PT Concrete | 10d | 2026-03-05 | 2026-03-18 | 13 | 66d |  |  |
| 15 | 2.1.7 | Plumbing | 10d | 2026-03-09 | 2026-03-20 | 13FS+2d | 64d |  |  |
| 16 | 2.1.8 | Water Submeters | 5d | 2026-03-09 | 2026-03-13 | 13FS+2d | 69d |  |  |
| 17 | 2.1.9 | Fire Protection | 10d | 2026-03-10 | 2026-03-23 | 13FS+3d | 63d |  |  |
| 18 | 2.1.10 | HVAC | 10d | 2026-03-11 | 2026-03-24 | 13FS+4d | 0d |  |  |
| 19 | 2.1.11 | Framing | 10d | 2026-03-25 | 2026-04-07 | 18 | 52d |  |  |
| 20 | 2.1.12 | Trusses | 5d | 2026-03-25 | 2026-03-31 | 18 | 0d |  |  |
| 21 | 2.2 | **Package #2 -** | 41d | 2026-04-01 | 2026-05-27 |  | 6d |  |  |
| 22 | 2.2.1 | Gypcrete/Lightweight | 10d | 2026-04-01 | 2026-04-14 | 20 | 47d |  |  |
| 23 | 2.2.2 | Insulation | 10d | 2026-04-03 | 2026-04-16 | 20FS+2d | 45d |  |  |
| 24 | 2.2.3 | Overhead doors | 5d | 2026-04-03 | 2026-04-09 | 20FS+2d | 50d |  |  |
| 25 | 2.2.4 | Stairs/Railings | 5d | 2026-04-06 | 2026-04-10 | 20FS+3d | 49d |  |  |
| 26 | 2.2.5 | Exterior Façade | 10d | 2026-04-07 | 2026-04-20 | 20FS+4d | 43d |  |  |
| 27 | 2.2.6 | Interior Doors/Frames/Hardware | 10d | 2026-04-08 | 2026-04-21 | 20FS+5d | 42d |  |  |
| 28 | 2.2.7 | Drywall & Metal Framing | 10d | 2026-04-09 | 2026-04-22 | 20FS+6d | 41d |  |  |
| 29 | 2.2.8 | Painting | 5d | 2026-04-09 | 2026-04-15 | 20FS+6d | 0d |  |  |
| 30 | 2.2.9 | Roofing | 10d | 2026-04-16 | 2026-04-29 | 29 | 0d |  |  |
| 31 | 2.2.10 | Doors/Trim/Specialties | 10d | 2026-04-14 | 2026-04-27 | 29SS+3d | 38d |  |  |
| 32 | 2.2.11 | Glass Shower Doors | 5d | 2026-04-14 | 2026-04-20 | 29SS+3d | 43d |  |  |
| 33 | 2.2.12 | Windows/Storefront | 10d | 2026-04-14 | 2026-04-27 | 29SS+3d | 38d |  |  |
| 34 | 2.2.13 | Appliances | 10d | 2026-05-04 | 2026-05-15 | 30FS+2d | 24d |  |  |
| 35 | 2.2.14 | Residential Cabinets/Countertops | 10d | 2026-05-05 | 2026-05-18 | 30FS+3d | 0d |  |  |
| 36 | 2.2.15 | Flooring | 10d | 2026-05-05 | 2026-05-18 | 30FS+3d | 16d | 0d |  |
| 37 | 2.2.16 | AV/VVD | 5d | 2026-05-19 | 2026-05-25 | 36 | 18d |  |  |
| 38 | 2.2.17 | Access Control/Fencing/Gates | 5d | 2026-05-21 | 2026-05-27 | 36FS+2d | 16d |  |  |

| ID | WBS | Task | Duration | Start | Finish | Predecessors | Total slack |
| --- | --- | --- | --- | --- | --- | --- | --- |
| 39 | 2.3 | **Package #3 -** | 23d | 2026-05-19 | 2026-06-18 |  | 0d |
| 40 | 2.3.1 | Custom Millwork | 10d | 2026-05-19 | 2026-06-01 | 35 | 0d |
| 41 | 2.3.2 | Gutters/Downspouts | 5d | 2026-05-26 | 2026-06-01 | 40SS+5d | 13d |
| 42 | 2.3.3 | Landscape and Irrigation | 10d | 2026-05-21 | 2026-06-03 | 40SS+2d | 11d |
| 43 | 2.3.4 | Compactor/Site CMU | 10d | 2026-05-22 | 2026-06-04 | 40SS+3d | 10d |
| 44 | 2.3.5 | Fireplace/Grills/Gas Appl | 5d | 2026-05-22 | 2026-05-28 | 40SS+3d | 15d |
| 45 | 2.3.6 | Pavers/Turf/Coverings | 5d | 2026-05-25 | 2026-05-29 | 40SS+4d | 0d |
| 46 | 2.3.7 | Deco Metals/Awnings/Trellis/Screen Encl | 5d | 2026-06-01 | 2026-06-05 | 45 | 9d |
| 47 | 2.3.8 | Pool | 10d | 2026-06-03 | 2026-06-16 | 45FS+2d | 2d |
| 48 | 2.3.9 | Site Specialties | 10d | 2026-06-04 | 2026-06-17 | 45FS+3d | 1d |
| 49 | 2.3.10 | Signage | 10d | 2026-06-05 | 2026-06-18 | 45FS+4d | 0d |
| 50 | 2.3.11 | Window Treatments | 5d | 2026-06-08 | 2026-06-12 | 45FS+5d | 4d |
| 51 | 2.3.12 | Final Cleaning | 5d | 2026-06-08 | 2026-06-12 | 45FS+5d | 4d |
